# Diagrama de Gantt Act2

How a schedule from MS Project changed from version to version. A marks actual dates.

## Version 1 (saved 2020-08-12)

Note of the change: reacomodo y modificación de los documentos, Diagrama de gantt, acta de cierre de proyecto, definición de alcances, Mapa de navegación

| ID | WBS | Task | Duration | Start | Finish | Predecessors | Complete | Total float | Constraint |
| --- | --- | --- | --- | --- | --- | --- | --- | --- | --- |
| 1 | 1 | **Sistema Gestor de una base de datos distribuida IECA** | 64d | 2020-05-14 | 2020-08-11 |  | 99% |  |  |
| 2 | 1.1 | **Definición de requerimientos** | 11d | 2020-05-14 | 2020-05-28 |  | 99% |  |  |
| 3 |  | Acta de inicio | 1d | 2020-05-14 A | 2020-05-14 A |  | 100% |  |  |
| 4 |  | Minuta de arranque | 1d | 2020-05-14 A | 2020-05-14 A |  | 100% |  |  |
| 5 |  | Análisis del problema | 2d | 2020-05-15 A | 2020-05-18 A | 4 | 100% |  |  |
| 6 |  | Entrevista | 2d | 2020-05-19 A | 2020-05-20 A | 5 | 100% |  |  |
| 7 |  | Recopilar información | 2d | 2020-01-20 A | 2020-05-21 A | 6 | 100% |  |  |
| 8 |  | Identificación de requerimientos | 3d | 2020-05-19 A | 2020-05-21 A | 5 | 100% |  |  |
| 9 |  | Identificación de restricciones de la base de datos a desarrollar | 3d | 2020-05-19 A | 2020-05-21 A | 5 | 100% |  |  |
| 10 |  | Análisis de los requerimientos | 2d | 2020-05-20 A | 2020-05-21 A | 8 | 100% |  |  |
| 11 |  | Representación de los requerimientos | 2d | 2020-05-25 A | 2020-05-26 A |  | 100% |  | start no earlier than 2020-05-25 |
| 12 |  | Validación de requerimientos | 1d | 2020-05-26 A | 2020-05-26 A |  | 100% |  | start no earlier than 2020-05-26 |
| 13 |  | Generación del SRS | 1d | 2020-05-27 A | 2020-05-27 A | 12, 11 | 100% |  |  |
| 14 |  | Firma del SRS | 1d | 2020-05-28 A | 2020-05-28 | 13 | 75% | 53d |  |
| 15 | 1.2 | **Diseño funcional** | 7d | 2020-05-29 A | 2020-06-08 A |  | 100% |  |  |
| 16 |  | Definir el funcionamiento del producto | 1d | 2020-05-29 A | 2020-05-29 A | 14 | 100% |  |  |
| 17 |  | Definir las tablas del producto | 3d | 2020-06-01 A | 2020-06-03 A | 11, 16 | 100% |  |  |
| 18 |  | Definir objetivo general | 2d | 2020-06-03 A | 2020-06-05 A | 11, 17 | 100% |  |  |
| 19 |  | Definir objetivos especificos y metodologicos | 2d | 2020-06-04 A | 2020-06-05 A | 11, 17 | 100% |  |  |
| 20 |  | Definir alcance | 1d | 2020-06-05 A | 2020-06-08 A | 18, 19 | 100% |  |  |
| 21 | 1.3 | **Diseño técnico** | 16d | 2020-06-04 A | 2020-06-25 |  | 99% |  |  |
| 22 |  | Diseño de diagramas de clases | 4d | 2020-06-04 A | 2020-06-09 A | 17 | 100% |  |  |
| 23 |  | Generar el diagrama E-R | 2d | 2020-06-08 A | 2020-06-09 A | 17, 18 | 100% |  |  |
| 24 |  | Validar el diagrama E-R | 2d | 2020-06-08 A | 2020-06-09 A | 17, 18 | 100% |  |  |
| 25 |  | Transformar al diagrama relacional | 3d | 2020-06-10 A | 2020-06-12 A | 23, 24 | 100% |  |  |
| 26 |  | Normalización de la base de datos | 3d | 2020-06-15 A | 2020-06-17 A | 25 | 100% |  |  |
| 27 |  | Codificar la base de datos | 2d | 2020-06-18 A | 2020-06-19 A | 26 | 100% |  |  |
| 28 |  | Validar entradas de datos | 3d | 2020-06-22 A | 2020-06-24 A | 27 | 100% |  |  |
| 29 |  | Firma del SRS | 1d | 2020-06-25 A | 2020-06-25 | 28 | 95% | 33d |  |
| 30 | 1.4 | **Código** | 23d | 2020-06-24 A | 2020-07-24 |  | 100% |  |  |
| 31 |  | Programar la tabla de Alumnos | 2d | 2020-06-24 A | 2020-06-25 A | 26 | 100% |  |  |
| 32 |  | Programar la tabla de Solbeca | 3d | 2020-06-24 A | 2020-06-26 A | 26 | 100% |  |  |
| 33 |  | Programar la tabla de Becas | 3d | 2020-06-24 A | 2020-06-26 A | 26 | 100% |  |  |
| 34 |  | Programar la tabla de Autbec | 3d | 2020-06-24 A | 2020-06-26 A | 31, 32, 33 | 100% |  |  |
| 35 |  | Pruebas unitarias | 1d | 2020-06-29 A | 2020-06-29 A | 34, 33, 32, 31 | 100% |  |  |
| 36 |  | Programar la tabla de Grupos | 4d | 2020-06-24 A | 2020-06-29 A | 35 | 100% |  |  |
| 37 |  | Programar la tabla de Aulas | 2d | 2020-06-24 A | 2020-06-25 A | 35 | 100% |  |  |
| 38 |  | Programar la tabla de Pagos | 3d | 2020-06-24 A | 2020-06-26 A | 35 | 100% |  |  |
| 39 |  | Pruebas unitarias | 1d | 2020-06-24 A | 2020-06-24 A | 36, 37, 38 | 100% |  |  |
| 40 |  | Programar la tabla de Curos | 2d | 2020-06-24 A | 2020-06-25 A | 39 | 100% |  |  |
| 41 |  | Programar la tabla de Telefono | 2d | 2020-06-24 A | 2020-06-25 A | 39 | 100% |  |  |
| 42 |  | Programar la tabla de Tipotel | 2d | 2020-06-24 A | 2020-06-25 A | 39 | 100% |  |  |
| 43 |  | Programar la tabla de Inscritos | 4d | 2020-06-24 A | 2020-06-29 A | 39 | 100% |  |  |
| 44 |  | Pruebas unitarias | 2d | 2020-06-24 A | 2020-06-25 A | 40, 41, 42, 43 | 100% |  |  |
| 45 |  | Programar la tabla de Instructores | 2d | 2020-06-26 A | 2020-06-29 A | 44 | 100% |  |  |
| 46 |  | Programar la tabla de especialidad | 1d | 2020-06-30 A | 2020-06-30 A | 44 | 100% |  |  |
| 47 |  | Pruebas unitarias | 2d | 2020-07-01 A | 2020-07-02 A | 45, 46 | 100% |  |  |
| 48 |  | Programar la tabla de Horarios | 3d | 2020-06-30 A | 2020-07-02 A | 47 | 100% |  |  |
| 49 |  | Programar la tabla de Tipo | 2d | 2020-07-03 A | 2020-07-06 A | 47 | 100% |  |  |
| 50 |  | Pruebas unitarias | 2d | 2020-07-20 A | 2020-07-21 A | 48, 49 | 100% |  |  |
| 51 |  | Validación contra diseño, agregación de los usuarios y funcionalidad | 3d | 2020-07-21 A | 2020-07-23 A | 35, 39, 44, 47, 50 | 100% |  | start no earlier than 2020-07-21 |
| 52 | 1.5 | **Pruebas** | 8d | 2020-07-23 | 2020-08-03 A |  | 100% |  |  |
| 53 |  | Subir módulos a servidor de pruebas | 1d | 2020-07-24 A | 2020-07-24 A | 51 | 100% |  | start no earlier than 2020-07-23 |
| 54 |  | Pruebas de integración de software | 4d | 2020-07-24 A | 2020-07-29 A | 51 | 100% |  |  |
| 55 |  | Pruebas de aceptación | 3d | 2020-07-30 A | 2020-08-03 A | 54 | 100% |  |  |
| 56 | 1.6 | **Implementación** | 6d | 2020-08-04 A | 2020-08-11 A |  | 100% |  |  |
| 57 |  | Subir software a sistema a servidor de pruebas | 2d | 2020-08-04 A | 2020-08-05 A | 55 | 100% |  |  |
| 58 |  | Pruebas de estrés | 4d | 2020-08-04 A | 2020-08-07 A | 55 | 100% |  | start no earlier than 2020-03-31 |
| 59 |  | Pruebas de aceptación | 5d | 2020-08-04 A | 2020-08-10 A | 55 | 100% |  |  |
| 60 |  | Implementar software a servidor en línea | 5d | 2020-08-04 A | 2020-08-10 A | 55 | 100% |  | start no earlier than 2020-03-30 |
| 61 |  | Acta de cierre de proyecto | 1d | 2020-08-11 A | 2020-08-11 A | 60 | 100% |  |  |

## Version 2 (saved 2020-08-13)

Note of the change: reacomodo y modificación de matriz de comunicacion y responsabilidades

Last finish stays 2020-08-11.

Changed:

| ID | Task | Other |
| --- | --- | --- |
| 16 | Definir el ciclo de vida | was named Definir el funcionamiento del producto |
